# HB WBS Durations

Schedule from MS Project, 2017-01-17 to 2017-07-14, status date 2017-01-18, costs in $, A marks actual dates.

## Calendars

- Standard: Mon-Fri 08:00-12:00, 13:00-17:00; Sat-Sun off.

## Resources

| Resource | Rate | Cost per use | Notes |
| --- | --- | --- | --- |
| Appliance Contractor |  |  |  |
| Architect | 60 |  |  |
| Concrete Contractor | 65 |  |  |
| Drywal Contractor | 58 |  |  |
| Electric Company |  |  |  |
| Electric Contractor | 45 |  |  |
| Fencing Contractor | 55 |  |  |
| Finish Carpentry Cotnractor | 50 |  |  |
| Flooring Contractor | 76 |  |  |
| Framing contractor | 40 |  |  |
| General contractor | 70 |  |  |
| Heating and AC contractor | 80 |  |  |
| Inspector |  |  |  |
| Insulation contractor | 90 |  |  |
| Landscape contractor | 40 |  |  |
| Maid service | 50 |  |  |
| Masonry contractor | 80 |  |  |
| Mortgage lender |  |  |  |
| Owner |  |  |  |
| Painting contractor | 47 |  |  |
| Plumbing contractor | 45 |  |  |
| Roofing contractor | 50 |  |  |
| Siding conractor | 42 |  |  |
| Site excavation contractor | 150 |  |  |
| Appliances |  | 7500 | Appliances - $7500 |
| Brick fencing |  | 2000 | Brick fencing - $2000 |
| Concrete floor |  | 2000 | Concrete floor - $2000 |
| Concrete |  | 10000 | Concrete - $10000 |
| Deck |  | 5000 | Deck - $5000 |
| Lumber |  | 40000 | Lumber - $40000 |
| Lumber hardware |  | 7200 | Lumber hardware - $7200 |
| Doors |  | 5000 | Doors - $5000 |
| Errosion control |  | 4000 | Errosion control - $4000 |
| Excavation |  | 10000 | Excavation - $10000 |
| Finish - Electrical |  | 1550 | Finish - Electrical - $1550 |
| Finish - Plumbing |  | 5200 | Finish - Plumbing - $5200 |
| Hanging - tapping - texturing |  | 2500 | Hanging - tapping - texturing - $2500 |
| Insulation |  | 2200 | Insulation - $2200 |
| Molding and trim |  | 25000 | Molding and trim - $25000 |
| Paint |  | 800 | Paint - $800 |
| Permits |  | 12000 | Permits - $12000 |
| Roofing |  | 3400 | Roofing - $3400 |
| Rough in electirc |  | 1750 | Rough in electirc - $1750 |
| Rough in plumbing |  | 3500 | Rough in plumbing - $3500 |
| Siding |  | 5900 | Siding - $5900 |
| Sod |  | 2400 | Sod - $2400 |
| Tile - grout - mortar and etc |  | 2400 | Tile - grout - mortar and etc - $2400 |
| Windows |  | 12000 | Windows - $12000 |

## Schedule

| ID | WBS | Task | Type | Duration | Start | Finish | Predecessors | Complete | Remaining | Total slack | Free slack | Resources | Work | Cost |
| --- | --- | --- | --- | --- | --- | --- | --- | --- | --- | --- | --- | --- | --- | --- |
| 1 | 1 | **Single Family House - Architect Design** |  | 129d | 2017-01-17 A | 2017-07-14 |  |  | 129d | 0d |  |  | 1787.2h | 116,212 |
| 2 | 1.1 | Start Project Milestone | milestone | 0d | 2017-01-17 A | 2017-01-17 A |  | 100% |  |  |  | General contractor |  |  |
| 3 | 1.2 | **General Conditions** |  | 118d | 2017-01-17 A | 2017-06-29 |  |  | 118d | 11d |  |  | 1579.2h | 105,292 |
| 4 | 1.2.1 | Finalize plans and develop estimate with owner, architect |  | 10d | 2017-01-17 A | 2017-01-30 | 2 |  | 10d | 0d |  | Architect | 80h | 4,800 |
| 5 | 1.2.2 | Sign contract and notice to proceed |  | 1d | 2017-01-31 | 2017-01-31 | 4 |  |  | 0d |  |  |  |  |
| 6 | 1.2.3 | **Apply for Permits** |  | 10d | 2017-02-01 | 2017-02-14 |  |  |  | 0d |  |  | 40h | 26,800 |
| 7 | 1.2.3.1 | Secure foundation permit |  | 10d | 2017-02-01 | 2017-02-14 | 5 |  |  | 0d |  | General contractor [5%]; Permits [16%] | 4h | 12,280 |
| 8 | 1.2.3.2 | Secure framing permit |  | 10d | 2017-02-01 | 2017-02-14 | 5 |  |  | 0d |  | General contractor [5%]; Permits [16%] | 4h | 12,280 |
| 9 | 1.2.3.3 | Secure electrical permit |  | 10d | 2017-02-01 | 2017-02-14 | 5 |  |  | 0d |  | General contractor [10%] | 8h | 560 |
| 10 | 1.2.3.4 | Secure plumbing permit |  | 10d | 2017-02-01 | 2017-02-14 | 5 |  |  | 0d |  | General contractor [10%] | 8h | 560 |
| 11 | 1.2.3.5 | Secure HVAC permit |  | 10d | 2017-02-01 | 2017-02-14 | 5 |  |  | 0d |  | General contractor [10%] | 8h | 560 |
| 12 | 1.2.3.6 | Secure miscellaneous permits |  | 10d | 2017-02-01 | 2017-02-14 | 5 |  |  | 108d |  | General contractor [10%] | 8h | 560 |
| 13 | 1.2.4 | **Site Work** |  | 3d | 2017-02-15 | 2017-02-17 |  |  |  | 0d |  |  | 20h | 2,400 |
| 14 | 1.2.4.1 | Clear and grub lot |  | 1d | 2017-02-15 | 2017-02-15 | 7, 8, 9, 10, 11 |  |  | 0d |  | Site excavation contractor | 8h | 1,200 |
| 15 | 1.2.4.2 | Install temporary power service |  | 1d | 2017-02-16 | 2017-02-16 | 14 |  |  | 105d | 0d | Electric Company [50%] | 4h |  |
| 16 | 1.2.4.3 | Install underground utilities |  | 1d | 2017-02-17 | 2017-02-17 | 15 |  |  | 105d |  | Site excavation contractor | 8h | 1,200 |
| 17 | 1.2.5 | **Foundation** |  | 20d | 2017-02-16 | 2017-03-15 |  |  |  | 0d |  |  | 112h | 7,656 |
| 18 | 1.2.5.1 | Excavate for foundations |  | 1d | 2017-02-16 | 2017-02-16 | 14 |  |  | 0d |  | Site excavation contractor | 8h | 1,200 |
| 19 | 1.2.5.2 | Form basement walls |  | 7d | 2017-02-17 | 2017-02-27 | 18 |  |  | 0d |  | Concrete Contractor | 56h | 3,640 |
| 20 | 1.2.5.3 | Place concrete for foundations & basement walls |  | 1d | 2017-02-28 | 2017-02-28 | 19 |  |  | 0d |  | Concrete Contractor | 8h | 520 |
| 21 | 1.2.5.4 | Cure basement walls for 7 days |  | 5d | 2017-03-01 | 2017-03-07 | 20 |  |  | 0d |  |  |  |  |
| 22 | 1.2.5.5 | Strip basement wall forms |  | 1d | 2017-03-08 | 2017-03-08 | 21 |  |  | 0d |  | Concrete Contractor | 8h | 520 |
| 23 | 1.2.5.6 | Waterproof/insulate basement walls |  | 2d | 2017-03-09 | 2017-03-10 | 22 |  |  | 0d |  | Insulation contractor | 16h | 1,440 |
| 24 | 1.2.5.7 | Perform foundation inspection |  | 1d | 2017-03-13 | 2017-03-13 | 23 |  |  | 0d |  | Inspector | 8h |  |
| 25 | 1.2.5.8 | Backfill foundation |  | 2d | 2017-03-14 | 2017-03-15 | 24 |  |  | 0d |  | Siding conractor [50%] | 8h | 336 |

| ID | WBS | Task | Duration | Start | Finish | Predecessors | Total slack | Free slack | Resources | Work | Cost |
| --- | --- | --- | --- | --- | --- | --- | --- | --- | --- | --- | --- |
| 26 | 1.2.6 | **Framing** | 22d | 2017-03-16 | 2017-04-14 |  | 0d |  |  | 176h | 6,720 |
| 27 | 1.2.6.1 | Install 1st floor joists | 2d | 2017-03-16 | 2017-03-17 | 25 | 0d |  | Framing contractor | 16h | 640 |
| 28 | 1.2.6.2 | Lay 1st floor decking | 2d | 2017-03-20 | 2017-03-21 | 27 | 0d |  | Framing contractor | 16h | 640 |
| 29 | 1.2.6.3 | Frame 1st floor walls | 4d | 2017-03-22 | 2017-03-27 | 28 | 0d |  | Framing contractor | 32h | 1,280 |
| 30 | 1.2.6.4 | Frame 1st floor corners | 1d | 2017-03-28 | 2017-03-28 | 29 | 0d |  | Framing contractor | 8h | 320 |
| 31 | 1.2.6.5 | Install 2nd floor joists | 2d | 2017-03-29 | 2017-03-30 | 30 | 0d |  | Framing contractor | 16h | 640 |
| 32 | 1.2.6.6 | Frame 2nd floor decking | 2d | 2017-03-31 | 2017-04-03 | 31 | 0d |  | Framing contractor | 16h | 640 |
| 33 | 1.2.6.7 | Frame 2nd floor walls | 3d | 2017-04-04 | 2017-04-06 | 32 | 0d |  | Framing contractor | 24h | 960 |
| 34 | 1.2.6.8 | Frame 2nd floor corners | 2d | 2017-04-07 | 2017-04-10 | 33 | 0d |  | Framing contractor | 16h | 640 |
| 35 | 1.2.6.9 | Complete roof framing | 3d | 2017-04-11 | 2017-04-13 | 34 | 0d |  | Framing contractor | 24h | 960 |
| 36 | 1.2.6.10 | Conduct framing inspection | 1d | 2017-04-14 | 2017-04-14 | 35 | 0d |  | Inspector | 8h |  |
| 37 | 1.2.7 | **Dry In** | 4d | 2017-04-17 | 2017-04-20 |  | 55d |  |  | 224h | 10,288 |
| 38 | 1.2.7.1 | Install 1st floor sheathing | 1d | 2017-04-17 | 2017-04-17 | 36 | 55d | 0d | Framing contractor [200%] | 16h | 640 |
| 39 | 1.2.7.2 | Install 2nd floor sheathing | 1d | 2017-04-17 | 2017-04-17 | 36 | 62d | 0d | Framing contractor [300%] | 24h | 960 |
| 40 | 1.2.7.3 | Install roof decking | 2d | 2017-04-17 | 2017-04-18 | 36 | 61d | 0d | Roofing contractor [300%] | 48h | 2,400 |
| 41 | 1.2.7.4 | Install felt, flashing and shingles | 2d | 2017-04-19 | 2017-04-20 | 40 | 61d |  | Siding conractor [400%] | 64h | 2,688 |
| 42 | 1.2.7.5 | Hang 1st floor exterior doors | 1d | 2017-04-18 | 2017-04-18 | 38 | 63d |  | Finish Carpentry Cotnractor | 8h | 400 |
| 43 | 1.2.7.6 | Install 1st floor windows | 2d | 2017-04-18 | 2017-04-19 | 38 | 55d | 0d | Finish Carpentry Cotnractor [200%] | 32h | 1,600 |
| 44 | 1.2.7.7 | Install 2nd floor windows | 2d | 2017-04-18 | 2017-04-19 | 39 | 62d |  | Finish Carpentry Cotnractor [200%] | 32h | 1,600 |
| 45 | 1.2.8 | **Exterior Finishes** | 7d | 2017-04-20 | 2017-04-28 |  | 55d |  |  | 160h | 9,152 |
| 46 | 1.2.8.1 | Complete exterior brick | 4d | 2017-04-20 | 2017-04-25 | 43 | 55d | 0d | Masonry contractor [200%] | 64h | 5,120 |
| 47 | 1.2.8.2 | Complete exterior siding | 3d | 2017-04-26 | 2017-04-28 | 46 | 55d |  | Siding conractor [400%] | 96h | 4,032 |
| 48 | 1.2.9 | **Utility Rough-B97Ins and Complete Concrete** | 23d | 2017-04-17 | 2017-05-17 |  | 0d |  |  | 207.2h | 10,640 |
| 49 | 1.2.9.1 | Rough-in plumbing | 5d | 2017-04-17 | 2017-04-21 | 36 | 0d |  | Plumbing contractor | 40h | 1,800 |
| 50 | 1.2.9.2 | Conduct rough-in plumbing inspection | 1d | 2017-04-24 | 2017-04-24 | 49 | 0d |  | Inspector [30%] | 2.4h |  |
| 51 | 1.2.9.3 | Place concrete for basement floor | 5d | 2017-04-25 | 2017-05-01 | 50 | 0d |  | Concrete Contractor | 40h | 2,600 |
| 52 | 1.2.9.4 | Rough-in electrical | 5d | 2017-05-02 | 2017-05-08 | 51 | 0d |  | Electric Contractor [200%] | 80h | 3,600 |
| 53 | 1.2.9.5 | Conduct rough-in electrical inspection | 1d | 2017-05-09 | 2017-05-09 | 52 | 0d |  | Inspector [30%] | 2.4h |  |
| 54 | 1.2.9.6 | Rough-in HVAC | 3d | 2017-05-10 | 2017-05-12 | 53 | 0d |  | Heating and AC contractor | 24h | 1,920 |
| 55 | 1.2.9.7 | Conduct rough-in HVAC inspection | 1d | 2017-05-15 | 2017-05-15 | 54 | 0d |  | Inspector [30%] | 2.4h |  |
| 56 | 1.2.9.8 | Rough-in communication - phone, cable, computer, alarm | 2d | 2017-05-16 | 2017-05-17 | 55 | 0d |  | Electric Contractor | 16h | 720 |

| ID | WBS | Task | Duration | Start | Finish | Predecessors | Total slack | Free slack | Resources | Work | Cost |
| --- | --- | --- | --- | --- | --- | --- | --- | --- | --- | --- | --- |
| 57 | 1.2.10 | **Interior Finishes** | 31d | 2017-05-18 | 2017-06-29 |  | 0d |  |  | 560h | 26,836 |
| 58 | 1.2.10.1 | **Insulation** | 4d | 2017-05-18 | 2017-05-23 |  | 0d |  |  | 28h | 2,160 |
| 59 | 1.2.10.1.1 | Place wall insulation - 1st floor | 1d | 2017-05-18 | 2017-05-18 | 56 | 0d |  | Insulation contractor | 8h | 720 |
| 60 | 1.2.10.1.2 | Place wall insulation - 2nd floor | 1d | 2017-05-19 | 2017-05-19 | 59 | 0d |  | Insulation contractor | 8h | 720 |
| 61 | 1.2.10.1.3 | Place ceiling insulation - 2nd floor | 1d | 2017-05-22 | 2017-05-22 | 60 | 0d |  | Insulation contractor | 8h | 720 |
| 62 | 1.2.10.1.4 | Conduct insulation inspection | 1d | 2017-05-23 | 2017-05-23 | 61, 59, 60 | 0d |  | Inspector [50%] | 4h |  |
| 63 | 1.2.10.2 | **Drywall** | 10d | 2017-05-24 | 2017-06-06 |  | 0d |  |  | 144h | 8,352 |
| 64 | 1.2.10.2.1 | Install drywall - 1st floor walls | 2d | 2017-05-24 | 2017-05-25 | 62 | 0d |  | Drywal Contractor [200%] | 32h | 1,856 |
| 65 | 1.2.10.2.2 | Install drywall - 1st floor overhead | 2d | 2017-05-26 | 2017-05-29 | 64 | 0d |  | Drywal Contractor [200%] | 32h | 1,856 |
| 66 | 1.2.10.2.3 | Install drywall 2nd floor walls | 2d | 2017-05-30 | 2017-05-31 | 65 | 0d |  | Drywal Contractor [200%] | 32h | 1,856 |
| 67 | 1.2.10.2.4 | Install drywall 2nd floor overhead | 2d | 2017-06-01 | 2017-06-02 | 66 | 0d |  | Drywal Contractor [200%] | 32h | 1,856 |
| 68 | 1.2.10.2.5 | Tape and float 1st floor drywall | 1d | 2017-06-05 | 2017-06-05 | 67 | 0d |  | Drywal Contractor | 8h | 464 |
| 69 | 1.2.10.2.6 | Tape and float 2nd floor drywall | 1d | 2017-06-06 | 2017-06-06 | 68 | 0d |  | Drywal Contractor | 8h | 464 |
| 70 | 1.2.10.3 | **Paint and Wallpaper** | 8d | 2017-06-07 | 2017-06-16 |  | 0d |  |  | 104h | 4,888 |
| 71 | 1.2.10.3.1 | Texture all except entry and kitchen - 1st floor | 1d | 2017-06-07 | 2017-06-07 | 69 | 0d |  | Painting contractor [200%] | 16h | 752 |
| 72 | 1.2.10.3.2 | Paint all except entry and kitchen - 1st floor | 1d | 2017-06-08 | 2017-06-08 | 71 | 0d |  | Painting contractor [200%] | 16h | 752 |
| 73 | 1.2.10.3.3 | Hang wallpaper entry and kitchen - 1st floor | 1d | 2017-06-09 | 2017-06-09 | 72 | 19.5d | 0d | Painting contractor | 8h | 376 |
| 74 | 1.2.10.3.4 | Texture all - 2nd floor | 1d | 2017-06-12 | 2017-06-12 | 73 | 19.5d | 0d | Painting contractor | 8h | 376 |
| 75 | 1.2.10.3.5 | Paint all - 2nd floor | 1d | 2017-06-13 | 2017-06-13 | 74 | 19.5d | 0d | Painting contractor | 8h | 376 |
| 76 | 1.2.10.3.6 | Paint exterior siding & trim work | 3d | 2017-06-14 | 2017-06-16 | 75 | 20d |  | Painting contractor [200%] | 48h | 2,256 |
| 77 | 1.2.10.4 | **Cabinets** | 5.5d | 2017-06-09 | 2017-06-16 |  | 0d |  |  | 72h | 3,600 |
| 78 | 1.2.10.4.1 | Install 1st floor - kitchen cabinets | 2d | 2017-06-09 | 2017-06-12 | 72 | 22d | 1.5d | Finish Carpentry Cotnractor [200%] | 32h | 1,600 |
| 79 | 1.2.10.4.2 | Install 1st floor - master bath and guest cabinets | 1d | 2017-06-09 | 2017-06-09 | 72 | 0d |  | Finish Carpentry Cotnractor [200%] | 16h | 800 |
| 80 | 1.2.10.4.3 | Install 2nd floor - hall bath and private bath cabinets | 0.5d | 2017-06-14 | 2017-06-14 | 75 | 19.5d | 0d | Finish Carpentry Cotnractor [200%] | 8h | 400 |
| 81 | 1.2.10.4.4 | Install chair rails, crown moldings, trim | 2d | 2017-06-14 | 2017-06-16 | 80, 78, 79 | 20.5d |  | Finish Carpentry Cotnractor | 16h | 800 |

| ID | WBS | Task | Duration | Start | Finish | Predecessors | Total slack | Free slack | Resources | Work | Cost |
| --- | --- | --- | --- | --- | --- | --- | --- | --- | --- | --- | --- |
| 82 | 1.2.10.5 | **Finish Plumbing** | 6d | 2017-06-12 | 2017-06-19 |  | 0d |  |  | 36h | 1,260 |
| 83 | 1.2.10.5.1 | Complete 1st floor - kitchen plumbing | 1d | 2017-06-12 | 2017-06-12 | 79 | 0d |  | Plumbing contractor [50%] | 4h | 180 |
| 84 | 1.2.10.5.2 | Complete 1st floor - master bath and guest plumbing | 4d | 2017-06-13 | 2017-06-16 | 83 | 19d | 0d | Plumbing contractor [50%] | 16h | 720 |
| 85 | 1.2.10.5.3 | Complete 2nd floor - hall bath and private bath plumbing | 2d | 2017-06-14 | 2017-06-16 | 80 | 19.5d | 0.5d | Plumbing contractor [50%] | 8h | 360 |
| 86 | 1.2.10.5.4 | Conduct finish plumbing inspection | 1d | 2017-06-19 | 2017-06-19 | 85, 83, 84 | 19d |  | Inspector | 8h |  |
| 87 | 1.2.10.6 | **Finish Electrical** | 5d | 2017-06-12 | 2017-06-16 |  | 1d |  |  | 48h |  |
| 88 | 1.2.10.6.1 | Complete 1st floor circuits to service panel | 1d | 2017-06-12 | 2017-06-12 | 79 | 24d |  | Electric Company | 8h |  |
| 89 | 1.2.10.6.2 | Complete 2nd floor circuits to service panel | 1d | 2017-06-13 | 2017-06-13 | 83 | 0d |  | Electric Company | 8h |  |
| 90 | 1.2.10.6.3 | Conduct finish electrical inspection | 1d | 2017-06-14 | 2017-06-14 | 89 | 0d |  | Inspector | 8h |  |
| 91 | 1.2.10.6.4 | Complete communications wiring - phone, cable, computer, alarm | 2d | 2017-06-15 | 2017-06-16 | 90 | 0d |  | Electric Company [150%] | 24h |  |
| 92 | 1.2.10.7 | **Finish HVAC** | 2d | 2017-06-19 | 2017-06-20 |  | 0d |  |  | 40h | 2,560 |
| 93 | 1.2.10.7.1 | Complete 1st floor - zone 1 HVAC | 1d | 2017-06-19 | 2017-06-19 | 91 | 0d |  | Heating and AC contractor [200%] | 16h | 1,280 |
| 94 | 1.2.10.7.2 | Complete 2nd floor - zone 2 HVAC | 1d | 2017-06-19 | 2017-06-19 | 91 | 0d |  | Heating and AC contractor [200%] | 16h | 1,280 |
| 95 | 1.2.10.7.3 | Conduct HVAC inspection | 1d | 2017-06-20 | 2017-06-20 | 93, 94 | 0d |  | Inspector | 8h |  |
| 96 | 1.2.10.8 | **Carpet, Tile and Appliances** | 7d | 2017-06-21 | 2017-06-29 |  | 0d |  |  | 88h | 4,016 |
| 97 | 1.2.10.8.1 | Tile entry, kitchen and baths | 3d | 2017-06-21 | 2017-06-23 | 95 | 0d |  | Masonry contractor | 24h | 1,920 |
| 98 | 1.2.10.8.2 | Carpet 1st floor | 1d | 2017-06-26 | 2017-06-26 | 97 | 0d |  | Fencing Contractor [200%] | 16h | 880 |
| 99 | 1.2.10.8.3 | Carpet 2nd floor | 1d | 2017-06-27 | 2017-06-27 | 98 | 0d |  | Flooring Contractor [200%] | 16h | 1,216 |
| 100 | 1.2.10.8.4 | Install appliances | 2d | 2017-06-28 | 2017-06-29 | 99, 97, 98 | 0d |  | Appliance Contractor [200%] | 32h |  |
| 101 | 1.3 | **Landscaping and Grounds Work** | 3d | 2017-06-30 | 2017-07-04 |  | 0d |  |  | 136h | 7,320 |
| 102 | 1.3.1 | Pour concrete driveway and sidewalks | 2d | 2017-06-30 | 2017-07-03 | 100 | 0d |  | Concrete Contractor [200%] | 32h | 2,080 |
| 103 | 1.3.2 | Install backyard fence | 3d | 2017-06-30 | 2017-07-04 | 100 | 8d |  | Fencing Contractor [300%] | 72h | 3,960 |
| 104 | 1.3.3 | Sod and complete plantings - front yard | 1d | 2017-07-04 | 2017-07-04 | 102 | 8d |  | Landscape contractor [200%] | 16h | 640 |
| 105 | 1.3.4 | Sod and complete plantings - backyard | 1d | 2017-07-04 | 2017-07-04 | 102 | 0d |  | Landscape contractor [200%] | 16h | 640 |

| ID | WBS | Task | Type | Duration | Start | Finish | Predecessors | Total slack | Resources | Work | Cost |
| --- | --- | --- | --- | --- | --- | --- | --- | --- | --- | --- | --- |
| 106 | 1.4 | **Final Acceptance** |  | 8d | 2017-07-05 | 2017-07-14 |  | 0d |  | 72h | 3,600 |
| 107 | 1.4.1 | Complete final inspection for certificate of occupancy |  | 1d | 2017-07-05 | 2017-07-05 | 105 | 0d | Inspector | 8h |  |
| 108 | 1.4.2 | Cleanup for occupancy |  | 1d | 2017-07-06 | 2017-07-06 | 107 | 0d | Maid service [200%] | 16h | 800 |
| 109 | 1.4.3 | Perform final walk-through inspection |  | 1d | 2017-07-07 | 2017-07-07 | 108 | 0d | Owner | 8h |  |
| 110 | 1.4.4 | Complete punch list items |  | 5d | 2017-07-10 | 2017-07-14 | 109 | 0d | General contractor | 40h | 2,800 |
| 111 | 1.5 | End Project Milestone | milestone | 0d | 2017-07-14 | 2017-07-14 | 110 | 0d |  |  |  |
